# Proyecto Agroprodel

Schedule from MS Project XML, 2026-07-27 to 2026-11-27.

## Calendars

- Estándar: Mon-Fri 08:00-12:00, 13:00-17:00; Sat-Sun off.

## Resources

| Resource |
| --- |
| Erick Basulto |
| Salvador Verdejo |
| Nabidh Ulloa |

## Schedule

| ID | WBS | Task | Type | Duration | Start | Finish | Complete | Constraint | Resources |
| --- | --- | --- | --- | --- | --- | --- | --- | --- | --- |
| 1 | 1 | **FASE 1: PLANIFICACIÓN Y DISEÑO** |  | 20d | 2026-07-27 | 2026-08-21 | 100% |  |  |
| 2 | 1.1 | Levantamiento de requerimientos y diagnóstico AS-IS (4 sedes, 246 usuarios) | manual | 10d | 2026-07-27 | 2026-08-07 | 100% | start no earlier than 2026-07-27 | Erick Basulto |
| 3 | 1.2 | Acta de constitución, roles Scrum y planificación inicial (Carta Gantt) | manual | 6d | 2026-07-27 | 2026-08-03 | 100% | start no earlier than 2026-07-27 | Erick Basulto; Salvador Verdejo; Nabidh Ulloa |
| 4 | 1.3 | Diseño de topología jerárquica Cisco (TO-BE), modelo SAFE y plan VLSM / IPv6 | manual | 10d | 2026-08-03 | 2026-08-14 | 100% | start no earlier than 2026-08-03 | Erick Basulto |
| 5 | 1.4 | Diseño de arquitectura de Telefonía IP (Issabel 5, 40 anexos PJSIP e IVR) | manual | 7d | 2026-08-10 | 2026-08-18 | 100% | start no earlier than 2026-08-10 | Salvador Verdejo |
| 6 | 1.5 | Selección técnica de equipos (matriz comparativa) y arquitectura IoT / AWS | manual | 10d | 2026-08-10 | 2026-08-21 | 100% | start no earlier than 2026-08-10 | Nabidh Ulloa |
| 7 | 1.6 | Hito 1: Aprobación de diseño, topología y plan de direccionamiento | milestone, manual | 0d | 2026-08-21 | 2026-08-21 | 100% | start no earlier than 2026-08-21 | Erick Basulto; Salvador Verdejo; Nabidh Ulloa |
| 8 | 2 | **FASE 2: IMPLEMENTACIÓN Y DESARROLLO** |  | 50d | 2026-08-24 | 2026-10-30 | 100% |  |  |
| 9 | 2.1 | Despliegue de laboratorio EVE-NG: VLANs, troncales 802.1Q, LACP y Rapid-PVST+ | manual | 15d | 2026-08-24 | 2026-09-11 | 100% | start no earlier than 2026-08-24 | Erick Basulto |
| 10 | 2.2 | Enrutamiento WAN: túneles GRE/IPsec AES-256, OSPF/OSPFv3, DHCP, PAT y QoS | manual | 15d | 2026-09-07 | 2026-09-25 | 100% | start no earlier than 2026-09-07 | Erick Basulto |
| 11 | 2.3 | Seguridad perimetral y segmentación: Firewall OPNsense (IDS Suricata) y ACLs | manual | 10d | 2026-09-21 | 2026-10-02 | 100% | start no earlier than 2026-09-21 | Erick Basulto |
| 12 | 2.4 | Instalación de central Issabel 5, carga de 40 extensiones PJSIP y hardening Fail2Ban | manual | 15d | 2026-09-14 | 2026-10-02 | 100% | start no earlier than 2026-09-14 | Salvador Verdejo |
| 13 | 2.5 | Normalización de audio (SoX), menú IVR (código 8000) y failover hacia anexo 1001 | manual | 10d | 2026-10-05 | 2026-10-16 | 100% | start no earlier than 2026-10-05 | Salvador Verdejo |
| 14 | 2.6 | Despliegue en nube AWS: servicios WEB, DNS, FTPS y monitoreo SOC (Zabbix/Wazuh) | manual | 15d | 2026-10-05 | 2026-10-23 | 100% | start no earlier than 2026-10-05 | Nabidh Ulloa |
| 15 | 2.7 | Prototipo IoT de riego: ESP32, sensores, relé, AWS Lambda y bot de Telegram | manual | 15d | 2026-10-12 | 2026-10-30 | 100% | start no earlier than 2026-10-12 | Nabidh Ulloa |
| 16 | 2.8 | Hito 2: Integración completa de red, telefonía IP, AWS y prototipo IoT | milestone, manual | 0d | 2026-10-30 | 2026-10-30 | 100% | start no earlier than 2026-10-30 | Erick Basulto; Salvador Verdejo; Nabidh Ulloa |
| 17 | 3 | **FASE 3: PRUEBAS, EVALUACIÓN Y CIERRE** |  | 20d | 2026-11-02 | 2026-11-27 | 83% |  |  |
| 18 | 3.1 | Pruebas de networking y seguridad (PN-01 a PN-06: redundancia, VPN, ACL e IPv6) | manual | 7d | 2026-11-02 | 2026-11-10 | 100% | start no earlier than 2026-11-02 | Erick Basulto |
| 19 | 3.2 | Pruebas de telefonía IP (CP-01 a CP-06: MicroSIP/Zoiper, IVR, DTMF y desborde) | manual | 10d | 2026-11-02 | 2026-11-13 | 100% | start no earlier than 2026-11-02 | Salvador Verdejo |
| 20 | 3.3 | Pruebas de servicios Cloud AWS, alertas SOC y validación IoT (PI-01 a PI-05) | manual | 6d | 2026-11-09 | 2026-11-16 | 100% | start no earlier than 2026-11-09 | Nabidh Ulloa |
| 21 | 3.4 | Presupuesto consolidado y evaluación económica (CAPEX, OPEX, Flujo de caja, VAN/TIR) | manual | 9d | 2026-11-09 | 2026-11-19 | 100% | start no earlier than 2026-11-09 | Erick Basulto; Salvador Verdejo; Nabidh Ulloa |
| 22 | 3.5 | Consolidación de Informe Final, anexos técnicos y presentación ejecutiva (PPT) | manual | 6d | 2026-11-16 | 2026-11-23 | 100% | start no earlier than 2026-11-16 | Erick Basulto; Salvador Verdejo; Nabidh Ulloa |
| 23 | 3.6 | Hito 3: Entrega final y defensa ante comisión evaluadora | manual | 5d | 2026-11-23 | 2026-11-27 |  | start no earlier than 2026-11-23 | Erick Basulto; Salvador Verdejo; Nabidh Ulloa |

Notes:
- 1: Responsable: Equipo completo
- 2: Responsable: Erick Basulto
- 3: Responsable: Equipo completo
- 4: Responsable: Erick Basulto
- 5: Responsable: Salvador Verdejo
- 6: Responsable: Nabidh Ulloa
- 7: Responsable: Equipo completo
- 8: Responsable: Equipo completo
- 9: Responsable: Erick Basulto
- 10: Responsable: Erick Basulto
- 11: Responsable: Erick Basulto
- 12: Responsable: Salvador Verdejo
- 13: Responsable: Salvador Verdejo
- 14: Responsable: Nabidh Ulloa
- 15: Responsable: Nabidh Ulloa
- 16: Responsable: Equipo completo
- 17: Responsable: Equipo completo
- 18: Responsable: Erick Basulto
- 19: Responsable: Salvador Verdejo
- 20: Responsable: Nabidh Ulloa
- 21: Responsable: Equipo completo
- 22: Responsable: Equipo completo
- 23: Responsable: Equipo completo
